Schedule from GanttProject, 2009-05-08 to 2009-08-07.

## Calendars

- Project calendar: Mon-Fri working; Sat-Sun off.

## Resources

| Resource |
| --- |
| Aaron Price |
| Rebecca Turner |
| Sara Beck |
| Elizabeth Waagen |
| David Benn |
| Michael Umbricht |
| Michael Kran |

## Schedule

| ID | WBS | Task | Type | Duration | Start | Finish | Predecessors | Complete | Resources |
| --- | --- | --- | --- | --- | --- | --- | --- | --- | --- |
| 1 | 1 | Draft Spec Received | milestone | 0d | 2009-05-08 | 2009-05-08 |  |  |  |
| 2 | 2 | Spec clarification & Requirements Analysis |  | 14d | 2009-05-11 | 2009-05-28 | 1 | 100% | David Benn; Sara Beck |
| 3 | 3 | **Code and Unit Test** |  | 41d | 2009-06-01 | 2009-07-27 | 2 | 80% | David Benn |
| 4 | 3.1 | Text input validation framework |  | 12d | 2009-06-01 | 2009-06-16 |  | 100% |  |
| 5 | 3.2 | Model-observer framework, initial GUI |  | 14d | 2009-06-01 | 2009-06-18 |  | 100% |  |
| 6 | 3.3 | GUI mockups and incorporation of feedback |  | 16d | 2009-06-19 | 2009-07-10 |  | 100% |  |
| 7 | 3.4 | Simple format input and text reader framework |  | 23d | 2009-06-11 | 2009-07-13 |  | 100% |  |
| 8 | 3.5 | AAVSO Download format input |  | 2d | 2009-07-10 | 2009-07-13 |  | 100% |  |
| 9 | 3.6 | SQL expts for views, separate & combined tables |  | 8d | 2009-06-26 | 2009-07-07 |  | 100% |  |
| 10 | 3.7 | Raw data plot and table |  | 7d | 2009-06-15 | 2009-06-23 |  | 100% |  |
| 11 | 3.8 | Raw data means plot and table |  | 5d | 2009-07-20 | 2009-07-24 |  | 75% |  |
| 12 | 3.9 | Phase plot and table |  | 3d | 2009-07-23 | 2009-07-27 |  |  |  |
| 13 | 3.10 | Phase plot and table (means) |  | 3d | 2009-07-23 | 2009-07-27 |  |  |  |
| 14 | 3.11 | Saving plots & tables |  | 7d | 2009-07-13 | 2009-07-21 |  | 50% |  |
| 15 | 3.12 | Printing plots & tables |  | 7d | 2009-07-13 | 2009-07-21 |  | 75% |  |
| 16 | 3.13 | AAVSO Database input |  | 3d | 2009-07-23 | 2009-07-27 |  |  |  |
| 17 | 3.14 | Single observation details from plot |  | 1d | 2009-07-27 | 2009-07-27 |  |  |  |
| 18 | 3.15 | Marking observation as discrepant (plot & table) |  | 1d | 2009-07-27 | 2009-07-27 |  |  |  |
| 19 | 3.16 | Visually joining observer data |  | 1d | 2009-07-27 | 2009-07-27 |  |  |  |
| 20 | 3.17 | Time panning (when mode is AID) |  | 1d | 2009-07-27 | 2009-07-27 |  |  |  |
| 21 | 3.18 | Zooming (more control than default chart zoom) |  | 1d | 2009-07-27 | 2009-07-27 |  |  |  |
| 22 | 3.19 | Category (band, fainter-than) colors (default, chooser) |  | 2d | 2009-07-24 | 2009-07-27 |  |  |  |
| 23 | 3.20 | Preferences (e.g. window size & position, band colors) |  | 1d | 2009-07-27 | 2009-07-27 |  |  |  |
| 24 | 3.21 | Web Start (JNLP) |  | 1d | 2009-07-27 | 2009-07-27 |  |  |  |

| ID | WBS | Task | Type | Duration | Start | Finish | Complete | Resources |
| --- | --- | --- | --- | --- | --- | --- | --- | --- |
| 25 | 4 | **Documentation** |  | 6d | 2009-07-24 | 2009-07-31 | 5% |  |
| 26 | 4.1 | HTML for Help menu item |  | 6d | 2009-07-24 | 2009-07-31 | 5% | Michael Umbricht [25%] |
| 27 | 5 | **Testing** |  | 34d | 2009-06-23 | 2009-08-07 | 8% |  |
| 28 | 5.1 | System Testing |  | 33d | 2009-06-23 | 2009-08-06 | 10% | Michael Umbricht [75%]; Elizabeth Waagen [50%]; Aaron Price; Michael Kran |
| 29 | 5.2 | Bug Fixes |  | 9d | 2009-07-27 | 2009-08-06 |  | David Benn |
| 30 | 5.3 | Acceptance Testing |  | 4d | 2009-08-04 | 2009-08-07 |  |  |
| 31 | 6 | CitizenSky Workshop 1 | milestone | 0d | 2009-08-04 | 2009-08-04 |  |  |
